# RBE Hands-on Materials Update Policy

How a schedule from GanttProject changed from version to version. A marks actual dates.

## Version 1 (saved 2020-11-15)

| ID | Task | Duration | Start | Finish | Predecessors |
| --- | --- | --- | --- | --- | --- |
| 1 | Summer Investigation phase | 115d | 2021-05-10 | 2021-10-15 |  |
| 2 | A-B break Propose new changes | 0d | 2021-10-18 | 2021-10-18 | 1 |
| 3 | B term Open Discussion of changes Period | 60d | 2021-10-18 | 2022-01-10 | 2 |
| 4 | Changes Finalized Into Requirements - Passed to R/D | 0d | 2022-01-11 | 2022-01-11 | 3 |
| 5 | C term Convert Requirements to Specifications | 41d | 2022-01-11 | 2022-03-08 | 4 |
| 6 | Finalize Parts Selection for Development and Testing | 0d | 2022-03-09 | 2022-03-09 | 5 |
| 7 | D Term Development Phase | 40d | 2022-03-09 | 2022-05-03 | 6 |
| 8 | D term Lab , Homework, Documentation Documents Updated | 48d | 2022-03-09 | 2022-05-13 | 6 |
| 9 | E1 Update all of the lecture slides and record videos | 34d | 2022-05-16 | 2022-06-30 | 8 |
| 10 | E1 Test Class Run With Paid Student Workers | 34d | 2022-05-16 | 2022-06-30 | 8 |
| 11 | E2 Feedback from Test Class Incorporated and Re-Run | 25d | 2022-07-11 | 2022-08-12 | 10 |
| 12 | Milestone A term Start All Documents updated | 0d | 2022-08-25 | 2022-08-25 | 8, 9, 20 |
| 13 | A term Test ISP For Credit | 37d | 2022-08-25 | 2022-10-14 | 12 |
| 14 | B term Feedback From Experimental Class Incorporated | 44d | 2022-10-17 | 2022-12-16 | 13 |
| 15 | Finalize Course Material | 0d | 2023-01-06 | 2023-01-06 | 14 |
| 16 | Production TIme | 60d | 2022-08-25 | 2022-11-17 | 12 |
| 17 | Second Semester Roll Out | 84d | 2023-01-06 | 2023-05-03 | 15, 16 |
| 18 | Budget Plan Due APBP For Next Year | 0d | 2022-03-15 | 2022-03-15 | 6FF |
| 19 | No Spending Period | 22d | 2022-06-01 | 2022-06-30 |  |
| 20 | Budget Availible to Lab Staff | 0d | 2022-07-01 | 2022-07-01 | 19 |

## Version 2 (saved 2020-11-16)

Note of the change: Adding pdf

Last finish 2023-05-03 → 2023-04-13 (-20d).

Added:

| ID | Task | Duration | Start | Finish | Predecessors | Resources |
| --- | --- | --- | --- | --- | --- | --- |
| 10 | Custom Electronics Development Period | 100d | 2021-12-17 | 2022-05-05 | 7 | Lab Staff Engineers [50%] |
| 19 | Pervious Years Budget Availible to Lab Staff | 0d | 2021-07-01 | 2021-07-01 |  |  |
| 23 | Previous years Test ISP For Credit | 37d | 2021-08-25 | 2021-10-14 |  | Lab Staff Engineers [25%]; Previous Years Professor [50%] |
| 24 | Previous Years Feedback From Experimental Class Incorporated | 44d | 2021-10-15 | 2021-12-16 | 23 | Lab Staff Engineers [50%]; Previous Years Professor [50%] |
| 25 | Previous Years Update Rollout | 86d | 2021-12-17 | 2022-04-15 | 24, 26 | Lab Staff Engineers [25%]; Previous Years Professor [50%] |
| 26 | Previous Years Production TIme | 60d | 2021-08-25 | 2021-11-17 | 19, 23SS | Lab Staff Engineers [25%] |
| 27 | Next Year Investigation phase | 18d | 2022-05-10 | 2022-06-02 | 25 | Lab Staff Engineers [50%]; UPC [50%]; Next Years Professor [25%] |
| 28 | Next Year Propose new changes | 0d | 2022-06-03 | 2022-06-03 | 27 | UPC |
| 29 | Next Year Open Discussion of changes Period | 58d | 2022-06-03 | 2022-08-24 | 28 | All Faculty [25%]; Previous Years Professor [25%] |
| 30 | Next Year Changes Finalized Into Requirements - Passed to R/D | 0d | 2022-08-25 | 2022-08-25 | 29 | Lab Staff Engineers; UPC |
| 31 | Next Year Convert Requirements to Specifications | 41d | 2022-08-25 | 2022-10-20 | 13, 22, 30 | Lab Staff Engineers [50%] |
| 32 | Next Year Finalize Parts Selection for Development and Testing | 0d | 2022-10-21 | 2022-10-21 | 31 | Lab Staff Engineers; UPC |
| 33 | Next Year Development Phase | 40d | 2022-10-21 | 2022-12-16 | 22, 32 | Lab Staff Engineers [50%] |
| 34 | Next Year Lab , Homework, Documentation Documents Updated | 48d | 2022-10-21 | 2022-12-28 | 32 | Professors of Class Being Updated [50%] |

Changed:

| ID | Task | Start | Finish | Duration | Predecessors | Other |
| --- | --- | --- | --- | --- | --- | --- |
| 1 | Investigation phase |  | 2021-10-15 → 2021-06-01 (-136d) | 115d → 17d |  | was named Summer Investigation phase; resources Lab Staff Engineers; UPC; Professors of Class Being Updated → Lab Staff Engineers [25%]; UPC [50%]; Professors of Class Being Updated [25%] |
| 2 | Propose new changes | 2021-10-18 → 2021-06-02 (-138d) | 2021-10-18 → 2021-06-02 (-138d) |  |  | was named A-B break Propose new changes |
| 3 | Open Discussion of changes Period | 2021-10-18 → 2021-06-02 (-138d) | 2022-01-10 → 2021-08-24 (-139d) |  |  | was named B term Open Discussion of changes Period |
| 4 | Changes Finalized Into Requirements - Passed to R/D | 2022-01-11 → 2021-08-25 (-139d) | 2022-01-11 → 2021-08-25 (-139d) |  |  |  |
| 5 | Convert Requirements to Specifications | 2022-01-11 → 2021-08-25 (-139d) | 2022-03-08 → 2021-10-20 (-139d) |  | 4 → 4, 19 | was named C term Convert Requirements to Specifications; resources Lab Staff Engineers → Lab Staff Engineers [50%] |
| 6 | Finalize Parts Selection for Development and Testing | 2022-03-09 → 2021-10-21 (-139d) | 2022-03-09 → 2021-10-21 (-139d) |  |  |  |
| 7 | Development Phase | 2022-03-09 → 2021-10-21 (-139d) | 2022-05-03 → 2021-12-16 (-138d) |  | 6 → 6, 19 | was named D Term Development Phase; resources Lab Staff Engineers → Lab Staff Engineers [50%] |
| 8 | Lab , Homework, Documentation Documents Updated | 2022-03-09 → 2021-10-21 (-139d) | 2022-05-13 → 2021-12-28 (-136d) |  |  | was named D term Lab , Homework, Documentation Documents Updated |
| 9 | Update all of the lecture slides and record videos | 2022-05-16 → 2021-12-29 (-138d) | 2022-06-30 → 2022-05-17 (-44d) | 34d → 100d |  | was named E1 Update all of the lecture slides and record videos |
| 11 | E1 Test Class Run With Paid Student Workers |  |  |  | 8 → 8, 10 |  |
| 12 | E2 Feedback from Test Class Incorporated and Re-Run |  |  |  |  | resources Lab Staff Engineers [75%]; Professors of Class Being Updated [25%] → Lab Staff Engineers [50%]; Professors of Class Being Updated [25%] |
| 13 | Milestone A term Start |  |  |  | 8, 9, 22 → 8, 9, 12, 22 | was named Milestone A term Start All Documents updated |
| 14 | A term Test ISP For Credit |  |  |  |  | resources Lab Staff Engineers [50%]; Professors of Class Being Updated [50%] → Lab Staff Engineers [25%]; Professors of Class Being Updated [50%] |
| 15 | B term Feedback From Experimental Class Incorporated | 2022-10-17 → 2022-10-25 (+8d) |  | 44d → 38d |  |  |
| 16 | Finalize Course Material | 2023-01-06 → 2022-12-19 (-18d) | 2023-01-06 → 2022-12-19 (-18d) |  |  |  |
| 17 | Production TIme |  |  |  |  | resources Lab Staff Engineers → Lab Staff Engineers [25%] |
| 18 | Second Semester Roll Out | 2023-01-06 → 2022-12-19 (-18d) | 2023-05-03 → 2023-04-13 (-20d) |  |  | resources Professors of Class Being Updated → Professors of Class Being Updated [25%]; Professors of Class Being Updated [50%] |
