How a schedule from MS Project MPX changed from version to version. A marks actual dates.

## Version 1 (saved 2020-11-15)

Note of the change: Adding pdf

| ID | Task | Duration | Start | Finish | Predecessors |
| --- | --- | --- | --- | --- | --- |
| 1 | Investigation phase | 17d | 2021-05-10 | 2021-06-01 |  |
| 2 | Propose new changes | 0d | 2021-06-02 | 2021-06-02 | 1 |
| 3 | Open Discussion of changes Period | 60d | 2021-06-02 | 2021-08-24 | 2 |
| 4 | Changes Finalized Into Requirements - Passed to R/D | 0d | 2021-08-25 | 2021-08-25 | 3 |
| 5 | Convert Requirements to Specifications | 41d | 2021-08-25 | 2021-10-20 | 4, 19 |
| 6 | Finalize Parts Selection for Development and Testing | 0d | 2021-10-21 | 2021-10-21 | 5 |
| 7 | Development Phase | 40d | 2021-10-21 | 2021-12-16 | 6, 19 |
| 8 | Lab , Homework, Documentation Documents Updated | 48d | 2021-10-21 | 2021-12-28 | 6 |
| 9 | Update all of the lecture slides and record videos | 100d | 2021-12-29 | 2022-05-17 | 8 |
| 10 | Custom Electronics Development Period | 100d | 2021-12-17 | 2022-05-05 | 7 |
| 11 | E1 Test Class Run With Paid Student Workers | 34d | 2022-05-16 | 2022-06-30 | 8, 10 |
| 12 | E2 Feedback from Test Class Incorporated and Re-Run | 25d | 2022-07-11 | 2022-08-12 | 11 |
| 13 | Milestone A term Start | 0d | 2022-08-15 | 2022-08-15 | 8, 9, 12, 22 |
| 14 | A term Test ISP For Credit | 37d | 2022-08-15 | 2022-10-04 | 13 |
| 15 | B term Feedback From Experimental Class Incorporated | 38d | 2022-10-25 | 2022-12-16 | 14 |
| 16 | Finalize Course Material | 0d | 2022-12-19 | 2022-12-19 | 15 |
| 17 | Production TIme | 60d | 2022-08-15 | 2022-11-04 | 13 |
| 18 | Second Semester Roll Out | 84d | 2022-12-19 | 2023-04-13 | 16, 17 |
| 19 | Pervious Years Budget Availible to Lab Staff | 0d | 2021-07-01 | 2021-07-01 |  |
| 20 | Budget Plan Due APBP For Next Year | 0d | 2022-03-15 | 2022-03-15 | 6FF |
| 21 | No Spending Period | 22d | 2022-06-01 | 2022-06-30 |  |
| 22 | Budget Availible to Lab Staff | 0d | 2022-07-01 | 2022-07-01 | 21 |
| 23 | Previous years Test ISP For Credit | 37d | 2021-08-25 | 2021-10-14 |  |
| 24 | Previous Years Feedback From Experimental Class Incorporated | 44d | 2021-10-15 | 2021-12-16 | 23 |
| 25 | Previous Years Update Rollout | 86d | 2021-12-17 | 2022-04-15 | 24, 26 |
| 26 | Previous Years Production TIme | 60d | 2021-08-25 | 2021-11-17 | 23SS, 19 |
| 27 | Next Year Investigation phase | 18d | 2022-04-18 | 2022-05-11 | 25 |
| 28 | Next Year Propose new changes | 0d | 2022-05-12 | 2022-05-12 | 27 |
| 29 | Next Year Open Discussion of changes Period | 60d | 2022-05-12 | 2022-08-04 | 28 |
| 30 | Next Year Changes Finalized Into Requirements - Passed to R/D | 0d | 2022-08-05 | 2022-08-05 | 29 |
| 31 | Next Year Convert Requirements to Specifications | 41d | 2022-08-15 | 2022-10-10 | 13, 22, 30 |
| 32 | Next Year Finalize Parts Selection for Development and Testing | 0d | 2022-10-11 | 2022-10-11 | 31 |
| 33 | Next Year Development Phase | 40d | 2022-10-11 | 2022-12-06 | 22, 32 |
| 34 | Next Year Lab , Homework, Documentation Documents Updated | 48d | 2022-10-11 | 2022-12-16 | 32 |

## Version 2 (saved 2020-11-15)

Note of the change: Adding pdf

Last finish stays 2023-04-13.

Removed: 10 Custom Electronics Development Period; 19 Pervious Years Budget Availible to Lab Staff

Changed:

| ID | Task | Start | Finish | Predecessors |
| --- | --- | --- | --- | --- |
| 5 | Convert Requirements to Specifications |  |  | 4, Pervious Years Budget Availible to Lab Staff → 4 |
| 7 | Development Phase |  |  | 6, Pervious Years Budget Availible to Lab Staff → 6 |
| 10 | E1 Test Class Run With Paid Student Workers |  |  | 8, Custom Electronics Development Period → 8 |
| 12 | Milestone A term Start | 2022-08-15 → 2022-08-25 (+10d) | 2022-08-15 → 2022-08-25 (+10d) |  |
| 13 | A term Test ISP For Credit | 2022-08-15 → 2022-08-25 (+10d) | 2022-10-04 → 2022-10-14 (+10d) |  |
| 16 | Production TIme | 2022-08-15 → 2022-08-25 (+10d) | 2022-11-04 → 2022-11-17 (+13d) |  |
| 23 | Previous Years Update Rollout | 2021-12-17 → 2022-01-11 (+25d) | 2022-04-15 → 2022-05-10 (+25d) | 22, 24 → 22 |
| 24 | Previous Years Production TIme |  |  | 21SS, Pervious Years Budget Availible to Lab Staff → 21SS |
| 25 | Next Year Investigation phase | 2022-04-18 → 2022-05-11 (+23d) | 2022-05-11 → 2022-06-03 (+23d) |  |
| 26 | Next Year Propose new changes | 2022-05-12 → 2022-06-06 (+25d) | 2022-05-12 → 2022-06-06 (+25d) |  |
| 27 | Next Year Open Discussion of changes Period | 2022-05-12 → 2022-06-06 (+25d) | 2022-08-04 → 2022-08-29 (+25d) |  |
| 28 | Next Year Changes Finalized Into Requirements - Passed to R/D | 2022-08-05 → 2022-08-30 (+25d) | 2022-08-05 → 2022-08-30 (+25d) |  |
| 29 | Next Year Convert Requirements to Specifications | 2022-08-15 → 2022-08-30 (+15d) | 2022-10-10 → 2022-10-25 (+15d) | 12, 20, 28 → 12, 28 |
| 30 | Next Year Finalize Parts Selection for Development and Testing | 2022-10-11 → 2022-10-26 (+15d) | 2022-10-11 → 2022-10-26 (+15d) |  |
| 31 | Next Year Development Phase | 2022-10-11 → 2022-10-26 (+15d) | 2022-12-06 → 2022-12-21 (+15d) | 20, 30 → 30 |
| 32 | Next Year Lab , Homework, Documentation Documents Updated | 2022-10-11 → 2022-10-26 (+15d) | 2022-12-16 → 2023-01-02 (+17d) |  |

## Version 3 (saved 2020-11-16)

Note of the change: Adding pdf

Last finish stays 2023-04-13.

Added:

| ID | Task | Duration | Start | Finish | Predecessors | Resources |
| --- | --- | --- | --- | --- | --- | --- |
| 10 | Custom Electronics Development Period | 100d | 2021-12-17 | 2022-05-05 | 7 | Lab Staff Engineers |
| 19 | Pervious Years Budget Availible to Lab Staff | 0d | 2021-07-01 | 2021-07-01 |  |  |

Changed:

| ID | Task | Start | Finish | Duration | Predecessors | Other |
| --- | --- | --- | --- | --- | --- | --- |
| 5 | Convert Requirements to Specifications |  |  |  | 4 → 4, 19 |  |
| 7 | Development Phase |  |  |  | 6 → 6, 19 |  |
| 11 | E1 Test Class Run With Paid Student Workers |  |  |  | 8 → 8, 10 |  |
| 25 | Previous Years Update Rollout | 2022-01-11 → 2021-12-17 (-25d) | 2022-05-10 → 2022-04-15 (-25d) |  | 24 → 24, 26 | resources Lab Staff Engineers → Lab Staff Engineers; Previous Years Professor |
| 26 | Previous Years Production TIme |  |  |  | 23SS → 23SS, 19 |  |
| 27 | Next Year Investigation phase | 2022-05-11 → 2022-05-10 (-1d) | 2022-06-03 → 2022-06-02 (-1d) |  |  | resources Lab Staff Engineers; UPC; Next Yeard Professor → Lab Staff Engineers; UPC; Next Years Professor |
| 28 | Next Year Propose new changes | 2022-06-06 → 2022-06-03 (-3d) | 2022-06-06 → 2022-06-03 (-3d) |  |  |  |
| 29 | Next Year Open Discussion of changes Period | 2022-06-06 → 2022-06-03 (-3d) | 2022-08-29 → 2022-08-24 (-5d) | 60d → 58d |  | resources All Faculty → All Faculty; Previous Years Professor |
| 30 | Next Year Changes Finalized Into Requirements - Passed to R/D | 2022-08-30 → 2022-08-25 (-5d) | 2022-08-30 → 2022-08-25 (-5d) |  |  |  |
| 31 | Next Year Convert Requirements to Specifications | 2022-08-30 → 2022-08-25 (-5d) | 2022-10-25 → 2022-10-20 (-5d) |  | 13, 30 → 13, 22, 30 |  |
| 32 | Next Year Finalize Parts Selection for Development and Testing | 2022-10-26 → 2022-10-21 (-5d) | 2022-10-26 → 2022-10-21 (-5d) |  |  |  |
| 33 | Next Year Development Phase | 2022-10-26 → 2022-10-21 (-5d) | 2022-12-21 → 2022-12-16 (-5d) |  | 32 → 22, 32 |  |
| 34 | Next Year Lab , Homework, Documentation Documents Updated | 2022-10-26 → 2022-10-21 (-5d) | 2023-01-02 → 2022-12-28 (-5d) |  |  |  |
